# dailyMarket-2

Schedule from MS Project, 2010-04-09 to 2010-10-29.

## Calendars

- Standard: Mon-Fri 08:00-12:00, 13:00-17:00; Sat-Sun off. Exceptions (off unless hours are given): 2010-04-17 08:00-12:00, 13:00-17:00, 2010-04-24 08:00-12:00, 13:00-17:00, 2010-05-01 08:00-12:00, 13:00-17:00, 2010-05-08 08:00-12:00, 13:00-17:00, 2010-05-15 08:00-12:00, 13:00-17:00, 2010-05-22 08:00-12:00, 13:00-17:00, 2010-05-29 to 2010-05-30 08:00-12:00, 13:00-17:00, 2010-06-05 08:00-12:00, 13:00-17:00, 2010-06-19 08:00-12:00, 13:00-17:00, 2010-06-27 08:00-12:00, 13:00-17:00, 2010-07-03 to 2010-07-04 08:00-12:00, 13:00-17:00, 2010-07-10 to 2010-07-11 08:00-12:00, 13:00-17:00, 2010-07-17 08:00-12:00, 13:00-17:00, 2010-07-31 08:00-12:00, 13:00-17:00, 2010-08-07 08:00-12:00, 13:00-17:00, 2010-08-21 08:00-12:00, 13:00-17:00, 2010-09-18 08:00-12:00, 13:00-17:00, 2010-10-02 08:00-12:00, 13:00-17:00, 2010-10-09 08:00-12:00, 13:00-17:00, 2010-10-16 08:00-12:00, 13:00-17:00, 2010-10-23 08:00-12:00, 13:00-17:00.

## Schedule

| ID | WBS | Task | Duration | Start | Finish | Predecessors | Total slack | Free slack | Constraint |
| --- | --- | --- | --- | --- | --- | --- | --- | --- | --- |
| 1 | 1.0 | **Proyecto DailyMarket** | 170d | 2010-04-09 | 2010-10-29 |  | 0d |  | must start on 2010-04-09 |
| 2 | 1.1 | **Fase Estructuración** | 18d | 2010-04-09 | 2010-04-30 |  | 0d |  |  |
| 3 | 1.1.1 | Definición de propuestas | 6d | 2010-04-09 | 2010-04-16 |  | 0d |  | finish no earlier than 2010-04-16 |
| 4 | 1.1.2 | Especificación de funcionalidades de la propuesta seleccionada | 6d | 2010-04-17 | 2010-04-23 | 3 | 0d |  | must start on 2010-04-17 |
| 5 | 1.1.3 | Elaboración del alcance de la propuesta elegida | 6d | 2010-04-17 | 2010-04-23 | 3 | 0d |  | must start on 2010-04-17 |
| 6 | 1.1.4 | Elaboración de matriz de responsabilidades y roles | 5d | 2010-04-24 | 2010-04-29 | 5, 4 | 12d | 0d |  |
| 7 | 1.1.4 | Acta de Proyecto | 1d | 2010-04-30 | 2010-04-30 | 6 | 12d |  | start no earlier than 2010-04-30 |
| 8 | 1.2 | **Fase Planificación** | 18d | 2010-05-01 | 2010-05-21 | 2 | 12d | 0d |  |
| 9 | 1.2.1 | Definición de alcances, limites y supuestos | 6d | 2010-05-01 | 2010-05-07 | 2 | 37d |  | finish no earlier than 2010-05-07 |
| 10 | 1.2.2 | Elaboración de la WBS | 4d | 2010-05-08 | 2010-05-12 | 2 | 33d |  | finish no earlier than 2010-05-12 |
| 11 | 1.2.3 | Definir plataforma Tecnologica | 3d | 2010-05-13 | 2010-05-15 | 2 | 30d |  | start no earlier than 2010-05-13 |
| 12 | 1.2.4 | Elaboración de factibilidad Economica | 6d | 2010-05-15 | 2010-05-21 | 2 | 0d |  | must start on 2010-05-15 |
| 13 | 1.2.5 | Elaborar matriz comunicacional | 6d | 2010-05-15 | 2010-05-21 | 2 | 0d |  | must start on 2010-05-15 |
| 14 | 1.2.6 | Definir Riesgos | 5d | 2010-05-15 | 2010-05-20 | 2 | 25d | 0d | start no earlier than 2010-05-15 |
| 15 | 1.2.8 | Plan de gestión de proyecto | 1d | 2010-05-21 | 2010-05-21 | 14 | 25d |  | start no earlier than 2010-05-21 |
| 16 | 1.3 | **Fase Ejecución** | 128d | 2010-05-22 | 2010-10-22 | 8 | 0d |  |  |
| 17 | 1.3.2 | **Análisis de infraestructura de la solución** | 14d | 2010-05-22 | 2010-06-05 | 8 | 18d | 0d |  |
| 18 | 1.3.2.1 | Elaborar Análisis de Infraestructura de Comunicaciones | 3d | 2010-05-26 | 2010-05-28 | 8 | 26d |  | start no earlier than 2010-05-26 |
| 19 | 1.3.2.2 | Elaborar Análisis Infraestructura de Hardware y Software (Puestos) | 3d | 2010-05-29 | 2010-05-31 | 8 | 19d | 1d | start no earlier than 2010-05-29 |
| 20 | 1.3.2.3 | Elaborar Análisis de Infraestructura de Hardware y Software (Servidores) | 2d | 2010-05-31 | 2010-06-01 | 8 | 20d | 2d | start no earlier than 2010-05-31 |
| 21 | 1.3.2.4 | Analizar Infraestructura de Hardware y Software (Entorno Desarrollo y Testing) | 3d | 2010-05-22 | 2010-05-25 | 8 | 27d | 9d | start no earlier than 2010-05-22 |
| 22 | 1.3.2.5 | Analizar Implementación de Infraestructura en puestos | 2d | 2010-06-02 | 2010-06-03 | 19 | 18d | 0d | finish no earlier than 2010-06-03 |
| 23 | 1.3.2.6 | Actualizar documentos de Infraestructura de HW y SW | 2d | 2010-06-04 | 2010-06-05 | 19, 20, 21, 22 | 18d |  | start no earlier than 2010-06-04 |
| 24 | 1.3.3 | **Análisis Funcional** | 22d | 2010-06-07 | 2010-07-02 | 17 | 18d |  |  |
| 25 | 1.3.3.1 | Elaborar documento de reconocimiento | 1d | 2010-06-07 | 2010-06-07 | 17 | 18d | 0d | start no earlier than 2010-06-07 |
| 26 | 1.3.3.2 | Elaborar documento de requerimientos funcionales | 2d | 2010-06-08 | 2010-06-09 | 25 | 18d | 0d | start no earlier than 2010-06-08 |
| 27 | 1.3.3.3 | Elaborar la especificación de los requerimientos | 2d | 2010-06-10 | 2010-06-11 | 26 | 18d | 0d | finish no earlier than 2010-06-11 |
| 28 | 1.3.3.4 | Elaborar Modelo de dominio | 2d | 2010-06-11 | 2010-06-14 | 17 | 108d |  | start no earlier than 2010-06-11 |
| 29 | 1.3.3.5 | Desarrollar la matriz de trazabilidad de requerimientos | 1d | 2010-06-14 | 2010-06-14 | 27 | 18d | 0d | finish no earlier than 2010-06-14 |

| ID | WBS | Task | Duration | Start | Finish | Predecessors | Total slack | Free slack | Constraint |
| --- | --- | --- | --- | --- | --- | --- | --- | --- | --- |
| 30 | 1.3.3.6 | **Elaborar diagramas y especificación de casos de uso** | 16d | 2010-06-15 | 2010-07-02 | 29 | 8d | 0d |  |
| 31 | 1.3.3.6.1 | Elaborar Casos de uso Modulo de Accesos al Sistema | 5d | 2010-06-15 | 2010-06-19 | 29 | 19d |  | start no earlier than 2010-06-15 |
| 32 | 1.3.3.6.2 | Elaborar Casos de uso Modulo de Venta | 5d | 2010-06-15 | 2010-06-19 | 29 | 19d |  | finish no earlier than 2010-06-19 |
| 33 | 1.3.3.6.3 | Elaborar Casos de uso Modulo de Stock | 5d | 2010-06-15 | 2010-06-19 | 29 | 19d |  | finish no earlier than 2010-06-19 |
| 34 | 1.3.3.6.4 | Elaborar Casos de uso Modulo de Estadísticas e indicadores | 6d | 2010-06-21 | 2010-06-27 | 29 | 13d |  | start no earlier than 2010-06-20 |
| 35 | 1.3.3.6.5 | Elaborar Casos de uso Modulo de Reportes | 5d | 2010-06-28 | 2010-07-02 | 29 | 8d |  | start no earlier than 2010-06-28 |
| 36 | 1.3.3.6.6 | Elaborar Casos de uso Modulo de Simulador de Compras | 6d | 2010-06-21 | 2010-06-27 | 29 | 13d |  | start no earlier than 2010-06-20 |
| 37 | 1.3.3.6.7 | Elaborar Casos de uso Modulo de ABM | 6d | 2010-06-21 | 2010-06-27 | 29 | 13d |  | start no earlier than 2010-06-20 |
| 38 | 1.3.4 | **Diseño** | 12d | 2010-07-03 | 2010-07-14 | 30 | 0d |  |  |
| 39 | 1.3.4.1 | Elaborar diagrama de clases | 2d | 2010-07-03 | 2010-07-04 | 30 | 10d |  | finish no earlier than 2010-07-04 |
| 40 | 1.3.4.2 | Elaborar diagrama de entidad relación | 2d | 2010-07-03 | 2010-07-04 | 30 | 8d | 0d | finish no earlier than 2010-07-04 |
| 41 | 1.3.4.3 | Elaborar diccionario de datos | 2d | 2010-07-05 | 2010-07-06 | 40 | 8d |  | finish no earlier than 2010-07-06 |
| 42 | 1.3.4.4 | Elaborar diagrama componentes | 3d | 2010-07-05 | 2010-07-07 | 30 | 7d |  | start no earlier than 2010-07-05 |
| 43 | 1.3.4.5 | Elaborar diagrama de despliegue | 3d | 2010-07-08 | 2010-07-10 | 30 | 4d |  | start no earlier than 2010-07-08 |
| 44 | 1.3.4.6 | Elaborar documento de arquitectura de software | 2d | 2010-07-10 | 2010-07-11 | 30 | 3d |  | finish no earlier than 2010-07-11 |
| 45 | 1.3.3.7 | Diseñar interfaces | 4d | 2010-07-11 | 2010-07-14 | 30 | 0d |  | start no earlier than 2010-07-11 |
| 46 | 1.3.4 | Elaborar PPT de la Presentación Comercial | 2d | 2010-07-15 | 2010-07-16 | 38 | 0d |  | must start on 2010-07-15 |
| 47 | 1.3.5 | **Construcción** | 60d | 2010-07-17 | 2010-10-01 | 38 | 0d |  |  |
| 48 | 1.3.5.1 | **Desarrollo del Modulo de Accesos al Sistema** | 6d | 2010-07-17 | 2010-07-23 | 38 | 0d |  |  |
| 49 | 1.3.5.1.1 | Desarrollar Apertura de cajas ( validación de huella digital ) | 3d | 2010-07-17 | 2010-07-20 | 38 | 60d | 0d | finish no earlier than 2010-07-20 |
| 50 | 1.3.5.1.2 | Desarrollar Cierre de cajas ( validación de huella digital) | 3d | 2010-07-17 | 2010-07-20 | 38 | 0d |  | must start on 2010-07-17 |
| 51 | 1.3.5.1.3 | Desarrollar Login de acuerdo al ROL | 3d | 2010-07-17 | 2010-07-20 | 38 | 0d |  | must start on 2010-07-17 |
| 52 | 1.3.5.1.4 | Realizar pruebas unitarias al modulo | 3d | 2010-07-21 | 2010-07-23 | 49, 50, 51 | 60d |  | start no earlier than 2010-07-21 |
| 53 | 1.3.5.2 | **Desarrollo del Modulo de Venta** | 6d | 2010-07-23 | 2010-07-30 | 38 | 55d |  |  |
| 54 | 1.3.5.2.1 | Desarrollar Registro de venta de producto ( Lector de código de barras ) | 4d | 2010-07-23 | 2010-07-28 | 38 | 55d | 0d | start no earlier than 2010-07-23 |
| 55 | 1.3.5.2.2 | Desarrollar Registro de pago-emisión de ticket | 4d | 2010-07-23 | 2010-07-28 | 38 | 55d | 0d | start no earlier than 2010-07-23 |
| 56 | 1.3.5.2.3 | Realizar pruebas unitarias al modulo | 2d | 2010-07-29 | 2010-07-30 | 54, 55 | 55d |  | start no earlier than 2010-07-29 |

| ID | WBS | Task | Duration | Start | Finish | Predecessors | Total slack | Free slack | Constraint |
| --- | --- | --- | --- | --- | --- | --- | --- | --- | --- |
| 57 | 1.3.5.3 | **Desarrollo del Modulo de Stock** | 5d | 2010-08-01 | 2010-08-06 | 38 | 0d |  |  |
| 58 | 1.3.5.3.1 | Desarrollar proceso Actualizar Stock | 2d | 2010-08-01 | 2010-08-03 | 38 | 0d |  | must start on 2010-08-01 |
| 59 | 1.3.5.3.2 | Desarrollar Envíos de Alertas | 2d | 2010-08-01 | 2010-08-03 | 38 | 0d |  | must start on 2010-08-01 |
| 60 | 1.3.5.3.3 | Desarrollar Controlar Stock para la generación de alertas | 2d | 2010-08-01 | 2010-08-03 | 38 | 0d |  | must start on 2010-08-01 |
| 61 | 1.3.5.3.4 | Realizar pruebas unitarias al modulo | 3d | 2010-08-04 | 2010-08-06 | 58, 59, 60 | 49d |  | start no earlier than 2010-08-04 |
| 62 | 1.3.5.4 | **Desarrollo del Modulo de Estadísticas e indicadores** | 11d | 2010-08-07 | 2010-08-20 | 38 | 38d |  |  |
| 63 | 1.3.5.4.1 | Desarrollar Seguimiento estadístico de articulos vendidos | 7d | 2010-08-07 | 2010-08-16 | 38 | 38d | 0d | finish no earlier than 2010-08-16 |
| 64 | 1.3.5.4.2 | Desarrollar Volumen de ventas | 7d | 2010-08-07 | 2010-08-16 | 38 | 38d | 0d | finish no earlier than 2010-08-16 |
| 65 | 1.3.5.4.3 | Desarrollar seguimiento de alertas generadas | 7d | 2010-08-07 | 2010-08-16 | 38 | 38d | 0d | finish no earlier than 2010-08-16 |
| 66 | 1.3.5.4.4 | Desarrollar seguimiento de empleados | 7d | 2010-08-07 | 2010-08-16 | 38 | 38d | 0d | finish no earlier than 2010-08-16 |
| 67 | 1.3.5.4.5 | Realizar pruebas unitarias al modulo | 4d | 2010-08-17 | 2010-08-20 | 63, 64, 65, 66 | 38d |  | start no earlier than 2010-08-17 |
| 68 | 1.3.5.5 | **Desarrollar Modulo de Reportes** | 20d | 2010-08-21 | 2010-09-16 | 38 | 18d |  |  |
| 69 | 1.3.5.5.2 | Desarrollar reportes de estadísticas | 11d | 2010-08-21 | 2010-09-03 | 38 | 22d | 4d | finish no earlier than 2010-09-03 |
| 70 | 1.3.5.5.3 | Desarrollar lista de precios | 11d | 2010-08-21 | 2010-09-03 | 38 | 22d | 4d | finish no earlier than 2010-09-03 |
| 71 | 1.3.5.5.4 | Realizar pruebas unitarias al modulo | 5d | 2010-09-10 | 2010-09-16 | 69, 70 | 18d |  | start no earlier than 2010-09-10 |
| 72 | 1.3.5.6 | **Desarrollar Modulo de Simulador de Compras** | 11d | 2010-09-18 | 2010-10-01 | 38 | 6d |  |  |
| 73 | 1.3.5.6.1 | Desarrollar Simulador de compras | 7d | 2010-09-18 | 2010-09-27 | 38 | 6d | 0d | finish no earlier than 2010-09-27 |
| 74 | 1.3.5.6.2 | Realizar pruebas unitarias al modulo | 4d | 2010-09-28 | 2010-10-01 | 73 | 6d |  | start no earlier than 2010-09-28 |
| 75 | 1.3.5.7 | **Desarrollar Modulo de ABM** | 11d | 2010-08-11 | 2010-08-24 | 38 | 0d |  |  |
| 76 | 1.3.5.7.1 | Desarrollar ABM de Artículos ( generación de códigos de barras ) | 9d | 2010-08-11 | 2010-08-21 | 38 | 0d |  | start no earlier than 2010-08-11 |
| 77 | 1.3.5.7.2 | Desarrollar ABM de Usuarios | 9d | 2010-08-11 | 2010-08-21 | 38 | 0d |  | finish no earlier than 2010-08-21 |
| 78 | 1.3.5.7.3 | Desarrollar ABM de Cajas | 9d | 2010-08-11 | 2010-08-21 | 38 | 0d |  | finish no earlier than 2010-08-21 |
| 79 | 1.3.5.7.4 | Desarrollar ABM de Roles | 9d | 2010-08-11 | 2010-08-21 | 38 | 0d |  | finish no earlier than 2010-08-21 |
| 80 | 1.3.5.7.5 | Realizar pruebas unitarias al modulo | 2d | 2010-08-22 | 2010-08-24 | 76, 77, 78, 79 | 0d |  | must start on 2010-08-22 |

| ID | WBS | Task | Duration | Start | Finish | Predecessors | Total slack | Free slack | Constraint |
| --- | --- | --- | --- | --- | --- | --- | --- | --- | --- |
| 81 | 1.3.6 | **Testing** | 6d | 2010-10-02 | 2010-10-08 | 47 | 6d | 0d |  |
| 82 | 1.3.6.1 | Realizar pruebas de integración Modulo Accesos al Sistema | 6d | 2010-10-02 | 2010-10-08 | 47 | 6d |  | start no earlier than 2010-10-02 |
| 83 | 1.3.6.2 | Realizar pruebas de integración Modulo de Ventas | 6d | 2010-10-02 | 2010-10-08 | 47 | 6d |  | start no earlier than 2010-10-02 |
| 84 | 1.3.6.3 | Realizar pruebas de integración Modulo de Stock | 6d | 2010-10-02 | 2010-10-08 | 47 | 6d |  | start no earlier than 2010-10-02 |
| 85 | 1.3.6.4 | Realizar pruebas de integración Modulo de Estadísticas e indicadores | 6d | 2010-10-02 | 2010-10-08 | 47 | 6d |  | start no earlier than 2010-10-02 |
| 86 | 1.3.6.5 | Realizar pruebas de integración Modulo Reportes | 6d | 2010-10-02 | 2010-10-08 | 47 | 6d |  | start no earlier than 2010-10-02 |
| 87 | 1.3.6.6 | Realizar pruebas de integración Modulo Simulador de Compras | 6d | 2010-10-02 | 2010-10-08 | 47 | 6d |  | start no earlier than 2010-10-02 |
| 88 | 1.3.6.7 | Realizar pruebas de integración Modulo de ABM | 6d | 2010-10-02 | 2010-10-08 | 47 | 6d |  | start no earlier than 2010-10-02 |
| 89 | 1.3.7 | **Implementación** | 12d | 2010-10-09 | 2010-10-22 | 81 | 0d |  |  |
| 90 | 1.3.7.1 | Implementar | 6d | 2010-10-09 | 2010-10-15 | 81 | 6d |  |  |
| 91 | 1.3.7.1 | Elaborar manual del usuario | 3d | 2010-10-16 | 2010-10-19 | 81 | 3d |  | start no earlier than 2010-10-16 |
| 92 | 1.3.7.2 | Elaborar el Manual de instalación | 3d | 2010-10-20 | 2010-10-22 | 81 | 0d |  | finish no earlier than 2010-10-22 |
| 93 | 1.4 | **Fase Cierre** | 6d | 2010-10-23 | 2010-10-29 | 16 | 0d |  |  |
| 94 | 1.4.1 | Elaborar documento de cierre del proyecto | 3d | 2010-10-23 | 2010-10-26 | 16 | 0d |  | start no earlier than 2010-10-23 |
| 95 | 1.4.2 | Elaborar documento de lecciones aprendidas | 3d | 2010-10-27 | 2010-10-29 | 94 | 0d |  | start no earlier than 2010-10-27 |
| 96 | 1.5 | **Fase Seguimiento y Control** | 152d | 2010-04-30 | 2010-10-28 |  | 0d |  |  |
| 97 | 1.5.1 | Informe de avance | 152d | 2010-04-30 | 2010-10-28 |  | 0d |  | must start on 2010-04-30 |
